# virtualni_popotnik

Schedule from MS Project, 2015-03-16 to 2015-12-15, costs in €.

## Calendars

- Standard: Mon-Fri 08:00-12:00, 13:00-17:00; Sat-Sun off.

## Resources

| Resource | Rate |
| --- | --- |
| Vodja projekta | 12 |
| Tajnica | 5.5 |
| Vzdrževalec | 7 |
| Vodja delovne skupine - mobilna a. | 10 |
| Vodja delovne skupine - spletna a. | 10 |
| Vodja delovne skupine - intelegentni s. | 10 |
| Vodja delovne skupine - BZP | 10 |
| Načrtovalec 1 | 8.5 |
| Načrtovalec 2 | 8.5 |
| Načrtovalec sistema | 8.5 |
| Načrtovalec 3 | 8.5 |
| Grafični oblikovalec 1 | 9 |
| Grafični oblikovalec 2 | 9 |
| Grafični oblikovalec 3 | 9 |
| Programer 1 | 8 |
| Programer 2 | 8 |
| Programer 3 | 8 |
| Programer 4 | 8 |
| Programer 5 | 8 |
| Programer 6 | 8 |
| Programer 7 | 8 |
| Programer 8 | 8 |
| Programer 9 | 8 |
| Programer 10 | 8 |
| Tester 1 | 7.5 |
| Tester 2 | 7.5 |
| Tester 3 | 7.5 |
| Tester 4 | 7.5 |
| Tester 5 | 7.5 |
| Tester 6 | 7.5 |
| Oblikovalec podatkovne baze | 9 |
| Mehatronik 1 | 8 |
| Mehatronik 2 | 8 |
| Elektronik 1 | 9.2 |
| Elektronik 2 | 9.2 |
| Daljinski upravljalnik | 300 |
| Paket senzorjev | 150 |
| 360° kamera | 300 |
| Delovna postaja | 1200 |
| Strežnik | 1800 |
| Brezpilotno zračno plovilo | 1500 |
| Pisarniški material | 200 |
| Tehnični material | 50 |
| Zakuska | 200 |
| Pravnik | 9 |
| Tester BZP 1 | 8 |
| Tester BZP 2 | 8 |

## Schedule

| ID | WBS | Task | Duration | Start | Finish | Predecessors | Total slack | Free slack | Resources | Work | Cost |
| --- | --- | --- | --- | --- | --- | --- | --- | --- | --- | --- | --- |
| 1 | 1 | Začetni sestanek s stranko | 4h | 2015-03-16 | 2015-03-16 |  | 0d |  | Vodja projekta; Tajnica | 8h | 54 |
| 2 | 2 | Interni sestanek | 3h | 2015-03-16 | 2015-03-16 | 1 | 0d |  | Tajnica; Vodja delovne skupine - mobilna a.; Vodja delovne skupine - spletna a.; Vodja delovne skupine - intelegentni s.; Vodja delovne skupine - BZP; Vodja projekta | 18h | 136.5 |
| 3 | 3 | Grobi projektni plan | 3d | 2015-03-16 | 2015-03-19 | 2 | 0d |  |  |  |  |
| 4 | 4 | Priprava pogodbe | 5h | 2015-03-19 | 2015-03-20 | 3 | 0d |  | Pravnik; Vodja projekta | 10h | 105 |
| 5 | 5 | Podpis pogodbe | 2h | 2015-03-20 | 2015-03-20 | 4 | 0d |  | Pravnik; Vodja projekta | 4h | 34 |
| 6 | 6 | **Priprava zahtev** | 6.75d | 2015-03-20 | 2015-03-31 |  | 0d |  |  | 442h | 4,108 |
| 7 | 6.1 | Zajem zahtev | 12h | 2015-03-20 | 2015-03-24 | 5 | 0d |  | Načrtovalec 1; Načrtovalec 2; Načrtovalec 3; Načrtovalec sistema; Vodja delovne skupine - mobilna a.; Vodja delovne skupine - spletna a.; Vodja delovne skupine - intelegentni s.; Vodja delovne skupine - BZP | 96h | 888 |
| 8 | 6.2 | Analiza zahtev | 1d | 2015-03-24 | 2015-03-25 | 7 | 0d |  | Načrtovalec 1; Načrtovalec 2; Načrtovalec 3; Načrtovalec sistema; Vodja projekta; Vodja delovne skupine - mobilna a.; Vodja delovne skupine - spletna a.; Vodja delovne skupine - intelegentni s.; Vodja delovne skupine - BZP | 72h | 688 |
| 9 | 6.3 | Izdelava specifikacij | 3d | 2015-03-25 | 2015-03-30 | 8 | 0d |  | Načrtovalec 1; Načrtovalec 2; Načrtovalec 3; Načrtovalec sistema; Vodja delovne skupine - mobilna a.; Vodja delovne skupine - spletna a.; Vodja delovne skupine - intelegentni s.; Vodja delovne skupine - BZP; Vodja projekta | 216h | 2,064 |
| 10 | 6.4 | Sestanek s stranko, usklajevanje specifikacij | 1d | 2015-03-30 | 2015-03-31 | 9 | 0d |  | Tajnica; Vodja delovne skupine - mobilna a.; Vodja delovne skupine - spletna a.; Vodja delovne skupine - intelegentni s.; Vodja delovne skupine - BZP; Vodja projekta | 48h | 364 |
| 11 | 6.5 | Potrditev zahtev | 2h | 2015-03-31 | 2015-03-31 | 10 | 0d |  | Vodja delovne skupine - mobilna a.; Vodja delovne skupine - spletna a.; Vodja delovne skupine - intelegentni s.; Vodja delovne skupine - BZP; Vodja projekta | 10h | 104 |
| 12 | 7 | **Analiza nabavnega materiala** | 6.88d | 2015-03-31 | 2015-04-09 |  | 177.88d |  |  | 93h | 44,772.3 |
| 13 | 7.1 | Pridobivanje ponudb za senzorje in kamere | 4d | 2015-03-31 | 2015-04-06 | 6 | 177.88d | 0d | Vodja delovne skupine - BZP | 32h | 320 |
| 14 | 7.2 | Nabava testnega materiala | 1h | 2015-04-06 | 2015-04-06 | 13 | 177.88d | 0d | Vodja delovne skupine - BZP; 360° kamera [400%]; Brezpilotno zračno plovilo [300%]; Daljinski upravljalnik [300%]; Tehnični material [200%] | 1h | 6,710 |
| 15 | 7.3 | Prevzem materiala | 1h | 2015-04-06 | 2015-04-06 | 14 | 177.88d | 0d | Tajnica | 1h | 5.5 |
| 16 | 7.4 | Preizkušanje testnega materiala | 2d | 2015-04-06 | 2015-04-08 | 15 | 177.88d | 0d | Elektronik 1; Mehatronik 1; Vodja delovne skupine - BZP | 48h | 435.2 |
| 17 | 7.5 | Dokumentiranje preizkušanja testnega materiala | 3h | 2015-04-08 | 2015-04-09 | 16 | 177.88d | 0d | Elektronik 1; Mehatronik 1; Vodja delovne skupine - BZP | 9h | 81.6 |
| 18 | 7.6 | Nabava materiala | 2h | 2015-04-09 | 2015-04-09 | 17 | 177.88d |  | Vodja delovne skupine - BZP; 360° kamera [1400%]; Brezpilotno zračno plovilo [1000%]; Daljinski upravljalnik [1000%]; Paket senzorjev [1000%]; Tehnični material [1400%]; Delovna postaja [600%]; Pisarniški material; Strežnik [300%] | 2h | 37,220 |
| 19 | 8 | **Priprava delovnega okolja** | 4.75d | 2015-03-31 | 2015-04-07 |  | 0d |  |  | 62h | 485.2 |
| 20 | 8.1 | Namestitev strežnika | 2h | 2015-03-31 | 2015-03-31 | 6 | 0d |  | Vzdrževalec | 2h | 14 |
| 21 | 8.2 | Konfiguracija strežnika | 4h | 2015-03-31 | 2015-04-01 | 20 | 0d |  | Vzdrževalec | 4h | 28 |
| 22 | 8.3 | Vzpostavitev RAID 6 diskovnega polja | 1d | 2015-04-01 | 2015-04-02 | 21 | 0d |  | Vzdrževalec | 8h | 56 |
| 23 | 8.4 | Priprava "delavnice" za brezpilotna zračna plovila | 1d | 2015-04-02 | 2015-04-03 | 22 | 0d |  | Elektronik 2; Mehatronik 2 | 16h | 137.6 |
| 24 | 8.5 | Namestitev delovnih postaj | 1d | 2015-04-03 | 2015-04-06 | 23 | 0d |  | Vzdrževalec | 8h | 56 |
| 25 | 8.6 | Priprava poročila o pripravi delovnega okolja | 1d | 2015-04-06 | 2015-04-07 | 24 | 0d |  | Vzdrževalec; Elektronik 2; Mehatronik 2 | 24h | 193.6 |

| ID | WBS | Task | Duration | Start | Finish | Predecessors | Total slack | Constraint | Resources | Work | Cost |
| --- | --- | --- | --- | --- | --- | --- | --- | --- | --- | --- | --- |
| 26 | 9 | **Vzpostavitev redudančnega delovnega okolja** | 2.25d | 2015-04-07 | 2015-04-09 |  | 0d |  |  | 38h | 317 |
| 27 | 9.1 | Analiza zahtev redundančnega delovnega okolja | 1d | 2015-04-07 | 2015-04-08 | 19 | 0d |  | Načrtovalec sistema; Oblikovalec podatkovne baze | 16h | 140 |
| 28 | 9.2 | Implementacija redundančnega delovnega okolja | 1d | 2015-04-08 | 2015-04-09 | 27 | 0d |  | Oblikovalec podatkovne baze; Vzdrževalec | 16h | 128 |
| 29 | 9.3 | Priprava poročila | 2h | 2015-04-09 | 2015-04-09 | 28 | 0d |  | Načrtovalec sistema; Oblikovalec podatkovne baze; Vzdrževalec | 6h | 49 |
| 30 | 10 | **Vzpostavitev podatkovne baze** | 5.62d | 2015-04-09 | 2015-04-17 |  | 0d |  |  | 105h | 961 |
| 31 | 10.1 | Analiza zahtev | 1d | 2015-04-09 | 2015-04-10 | 26, 19 | 0d |  | Načrtovalec sistema; Oblikovalec podatkovne baze; Vzdrževalec | 24h | 196 |
| 32 | 10.2 | Izdelava ER diagrama | 1d | 2015-04-10 | 2015-04-13 | 31 | 0d |  | Oblikovalec podatkovne baze | 8h | 72 |
| 33 | 10.3 | Modeliranje podatkovne baze | 4h | 2015-04-13 | 2015-04-13 | 32 | 0d |  | Oblikovalec podatkovne baze | 4h | 36 |
| 34 | 10.4 | Vzpostavitev podatkovnega strežnika | 4h | 2015-04-14 | 2015-04-14 | 33 | 0d |  | Oblikovalec podatkovne baze; Vzdrževalec | 8h | 64 |
| 35 | 10.5 | Implementacija podatkovne baze | 1d | 2015-04-14 | 2015-04-15 | 34 | 0d |  | Oblikovalec podatkovne baze | 8h | 72 |
| 36 | 10.6 | Priprava politike arhiviranja in obnovitve podatkovne baze | 1d | 2015-04-15 | 2015-04-16 | 35 | 0d |  | Načrtovalec sistema; Oblikovalec podatkovne baze; Vodja delovne skupine - intelegentni s.; Vodja delovne skupine - mobilna a.; Vodja delovne skupine - spletna a.; Vodja projekta | 48h | 476 |
| 37 | 10.7 | Priprava poročila | 5h | 2015-04-16 | 2015-04-17 | 36 | 0d |  | Oblikovalec podatkovne baze | 5h | 45 |
| 38 | 11 | **Razvoj** | 128.12d | 2015-04-17 | 2015-10-14 |  | 0d |  |  | 14517h | 122,473.9 |
| 39 | 11.1 | **Sestanek delovne skupine** | 0.12d | 2015-04-17 | 2015-04-17 |  | 128d |  |  | 12h | 109.7 |
| 40 | 11.1.1 | Sestanek delovne skupine | 1h | 2015-04-17 | 2015-04-17 | 30 | 128d | start no earlier than 2015-03-16 | Elektronik 1; Grafični oblikovalec 1; Mehatronik 1; Vodja delovne skupine - spletna a.; Načrtovalec 1; Vodja delovne skupine - mobilna a.; Programer 1; Vodja projekta; Vodja delovne skupine - BZP; Vodja delovne skupine - intelegentni s.; Tester 2; Tester 1 | 12h | 109.7 |
| 41 | 11.2 | **Inteligentni sistem** | 128.12d | 2015-04-17 | 2015-10-14 |  | 0d |  |  | 4049h | 32,829 |
| 42 | 11.2.1 | Načrtovanje inteligentnega sistema | 3d | 2015-04-17 | 2015-04-22 | 30 | 0d |  | Načrtovalec sistema; Oblikovalec podatkovne baze; Vodja delovne skupine - intelegentni s. | 72h | 660 |
| 43 | 11.2.2 | Implementacija podatkovne baze | 1h | 2015-04-22 | 2015-04-22 | 42 | 0d |  | Oblikovalec podatkovne baze | 1h | 9 |
| 44 | 11.2.3 | Razvoj storitev za dostop in vnos podatkov | 21d | 2015-04-22 | 2015-05-21 | 43 | 0d |  | Programer 1; Programer 2; Programer 3; Programer 4 | 672h | 5,376 |
| 45 | 11.2.4 | Implementacija storitev za zajem podatkov (vreme) | 21d | 2015-05-21 | 2015-06-19 | 44 | 0d |  | Programer 1; Programer 2; Programer 3; Programer 4 | 672h | 5,376 |
| 46 | 11.2.5 | Razvoj mehanizmov za varovanje podatkov | 21d | 2015-06-19 | 2015-07-20 | 45 | 0d |  | Programer 1; Programer 2; Programer 3; Programer 4 | 672h | 5,376 |
| 47 | 11.2.6 | Razvoj nadzora brezpilotnih zračnih plovil | 40d | 2015-07-20 | 2015-09-14 | 46 | 0d |  | Programer 1; Programer 2; Programer 3; Programer 4 | 1280h | 10,240 |
| 48 | 11.2.7 | Priprava dokumentacije | 7d | 2015-09-14 | 2015-09-23 | 47 | 0d |  | Programer 1; Vodja delovne skupine - intelegentni s. | 112h | 1,008 |
| 49 | 11.2.8 | Predstavitev rezultatov iteracije naročniku | 1d | 2015-09-23 | 2015-09-24 | 48 | 0d |  | Vodja delovne skupine - intelegentni s. | 8h | 80 |
| 50 | 11.2.9 | Ponovna iteracija implementacije | 14d | 2015-09-24 | 2015-10-14 | 49 | 0d |  | Programer 1; Programer 2; Programer 3; Programer 4; Vodja delovne skupine - intelegentni s. | 560h | 4,704 |

| ID | WBS | Task | Duration | Start | Finish | Predecessors | Total slack | Free slack | Resources | Work | Cost |
| --- | --- | --- | --- | --- | --- | --- | --- | --- | --- | --- | --- |
| 51 | 11.3 | **Modifikacija brezpilotna zračna plovila** | 128d | 2015-04-17 | 2015-10-14 |  | 0.12d |  |  | 3992h | 34,603.2 |
| 52 | 11.3.1 | Načrtovanje modifikacije brezpilotnega zračnega plovila | 3d | 2015-04-17 | 2015-04-22 | 30 | 0.12d | 0d | Elektronik 1; Mehatronik 1; Vodja delovne skupine - BZP; Načrtovalec 1 | 96h | 856.8 |
| 53 | 11.3.2 | Priprava senzorjev in kamere | 5d | 2015-04-22 | 2015-04-29 | 52 | 0.12d | 0d | Elektronik 1; Mehatronik 1 | 80h | 688 |
| 54 | 11.3.3 | Povezava senzorjev in kamere z inteligentnim sistemom | 24d | 2015-04-29 | 2015-06-02 | 53 | 0.12d | 0d | Elektronik 1; Elektronik 2; Mehatronik 1; Mehatronik 2 | 768h | 6,604.8 |
| 55 | 11.3.4 | Implementacija modifikacij | 24d | 2015-06-02 | 2015-07-06 | 54 | 0.12d | 0d | Elektronik 1; Elektronik 2; Mehatronik 1; Mehatronik 2 | 768h | 6,604.8 |
| 56 | 11.3.5 | Razvoj samodejnega upravljanja letenja | 50d | 2015-07-06 | 2015-09-14 | 55 | 0.12d | 0d | Elektronik 1; Elektronik 2; Mehatronik 1; Mehatronik 2 | 1600h | 13,760 |
| 57 | 11.3.6 | Priprava dokumentacije | 7d | 2015-09-14 | 2015-09-23 | 56 | 0.12d | 0d | Načrtovalec 1; Vodja delovne skupine - BZP | 112h | 1,036 |
| 58 | 11.3.7 | Predstavitev rezultatov iteracije naročniku | 1d | 2015-09-23 | 2015-09-24 | 57 | 0.12d | 0d | Vodja delovne skupine - BZP | 8h | 80 |
| 59 | 11.3.8 | Ponovna iteracija implementacije | 14d | 2015-09-24 | 2015-10-14 | 58 | 0.12d |  | Elektronik 1; Elektronik 2; Mehatronik 1; Mehatronik 2; Vodja delovne skupine - BZP | 560h | 4,972.8 |
| 60 | 11.4 | **Spletna aplikacija** | 110d | 2015-04-17 | 2015-09-18 |  | 18.12d |  |  | 3472h | 29,828 |
| 61 | 11.4.1 | Načrtovanje spletne aplikacije | 3d | 2015-04-17 | 2015-04-22 | 30 | 18.12d | 0d | Načrtovalec 2; Vodja delovne skupine - spletna a. | 48h | 444 |
| 62 | 11.4.2 | Izdelava grafične predloge | 3d | 2015-04-22 | 2015-04-27 | 61 | 18.12d | 0d | Grafični oblikovalec 1; Grafični oblikovalec 2 | 48h | 432 |
| 63 | 11.4.3 | Implementacije grafičnega vmesnika | 6d | 2015-04-27 | 2015-05-05 | 62 | 18.12d | 0d | Grafični oblikovalec 1; Grafični oblikovalec 2 | 96h | 864 |
| 64 | 11.4.4 | Implementacija sprehoda v virtualni realnosti | 38d | 2015-05-05 | 2015-06-26 | 63 | 18.12d | 0d | Programer 5; Programer 6; Programer 7; Vodja delovne skupine - spletna a. | 1216h | 10,336 |
| 65 | 11.4.5 | Implementacija sprehoda v načinu 360° panorame | 38d | 2015-06-26 | 2015-08-19 | 64 | 18.12d | 0d | Programer 5; Programer 6; Programer 7; Vodja delovne skupine - spletna a. | 1216h | 10,336 |
| 66 | 11.4.6 | Priprava dokumentacije | 7d | 2015-08-19 | 2015-08-28 | 65 | 18.12d | 0d | Grafični oblikovalec 1; Programer 5; Vodja delovne skupine - spletna a. | 168h | 1,512 |
| 67 | 11.4.7 | Predstavitev rezultatov iteracije naročniku | 1d | 2015-08-28 | 2015-08-31 | 66 | 18.12d | 0d | Vodja delovne skupine - spletna a. | 8h | 80 |
| 68 | 11.4.8 | Ponovna iteracija implementacije | 14d | 2015-08-31 | 2015-09-18 | 67 | 18.12d |  | Grafični oblikovalec 1; Grafični oblikovalec 2; Programer 5; Programer 6; Programer 7; Vodja delovne skupine - spletna a. | 672h | 5,824 |
| 69 | 11.5 | **Mobilna aplikacija** | 117d | 2015-04-17 | 2015-09-29 |  | 11.12d |  |  | 2992h | 25,104 |
| 70 | 11.5.1 | Načrtovanje mobilne aplikacije | 3d | 2015-04-17 | 2015-04-22 | 30 | 11.12d | 0d | Načrtovalec 3; Vodja delovne skupine - mobilna a. | 48h | 444 |
| 71 | 11.5.2 | Izdelava grafičnega vmesnika | 5d | 2015-04-22 | 2015-04-29 | 70 | 11.12d | 0d | Grafični oblikovalec 3 | 40h | 360 |
| 72 | 11.5.3 | Modeliranje podatkovne baze | 2d | 2015-04-29 | 2015-05-01 | 71 | 11.12d | 0d | Oblikovalec podatkovne baze | 16h | 144 |
| 73 | 11.5.4 | Vzpostavitev lokalne podatkovne baze | 1d | 2015-05-01 | 2015-05-04 | 72 | 11.12d | 0d | Oblikovalec podatkovne baze | 8h | 72 |
| 74 | 11.5.5 | Implementacija grafične vmesnika | 6d | 2015-05-04 | 2015-05-12 | 73 | 11.12d | 0d | Grafični oblikovalec 3 | 48h | 432 |
| 75 | 11.5.6 | Implementacija sprehoda v načinu 360° panorame | 31d | 2015-05-12 | 2015-06-24 | 74 | 11.12d | 0d | Programer 8; Programer 9; Programer 10 | 744h | 5,952 |
| 76 | 11.5.7 | Implementacija sprehoda v virtualni realnosti | 31d | 2015-06-24 | 2015-08-06 | 75 | 11.12d | 0d | Programer 8; Programer 9; Programer 10 | 744h | 5,952 |
| 77 | 11.5.8 | Implementacija vnosa podatkov | 16d | 2015-08-06 | 2015-08-28 | 76 | 11.12d | 0d | Programer 8; Programer 9; Programer 10 | 384h | 3,072 |
| 78 | 11.5.9 | Priprava dokumentacije | 7d | 2015-08-28 | 2015-09-08 | 77 | 11.12d | 0d | Načrtovalec 3; Programer 8; Vodja delovne skupine - mobilna a. | 168h | 1,484 |
| 79 | 11.5.10 | Predstavitev rezultatov iteracije naročniku | 1d | 2015-09-08 | 2015-09-09 | 78 | 11.12d | 0d | Vodja delovne skupine - mobilna a. | 8h | 80 |
| 80 | 11.5.11 | Ponovna iteracija implementacije | 14d | 2015-09-09 | 2015-09-29 | 79 | 11.12d |  | Grafični oblikovalec 3; Načrtovalec 3; Programer 8; Programer 9; Programer 10; Vodja delovne skupine - mobilna a.; Vodja projekta | 784h | 7,112 |

| ID | WBS | Task | Duration | Start | Finish | Predecessors | Total slack | Free slack | Resources | Work | Cost |
| --- | --- | --- | --- | --- | --- | --- | --- | --- | --- | --- | --- |
| 81 | 12 | **Testiranje** | 30d | 2015-10-14 | 2015-11-25 |  | 0d |  |  | 1376h | 10,468 |
| 82 | 12.1 | **Spletna aplikacija** | 26d | 2015-10-14 | 2015-11-19 |  | 4d |  |  | 352h | 2,640 |
| 83 | 12.1.1 | Priprava načrta | 3d | 2015-10-14 | 2015-10-19 | 38 | 4d | 0d | Tester 1 | 24h | 180 |
| 84 | 12.1.2 | Priprava testnih primerov | 2d | 2015-10-19 | 2015-10-21 | 83 | 4d | 0d | Tester 2 | 16h | 120 |
| 85 | 12.1.3 | Testiranje | 13d | 2015-10-21 | 2015-11-09 | 84 | 4d | 0d | Tester 1; Tester 2 | 208h | 1,560 |
| 86 | 12.1.4 | Poročilo | 1d | 2015-11-09 | 2015-11-10 | 85 | 4d | 0d | Tester 1 | 8h | 60 |
| 87 | 12.1.5 | Priprava dokumentacije | 2d | 2015-11-10 | 2015-11-12 | 86 | 4d | 0d | Tester 2 | 16h | 120 |
| 88 | 12.1.6 | Ponovna iteracija implementacije | 5d | 2015-11-12 | 2015-11-19 | 87 | 4d |  | Tester 1; Tester 2 | 80h | 600 |
| 89 | 12.2 | **Inteligentni sistem** | 30d | 2015-10-14 | 2015-11-25 |  | 0d |  |  | 416h | 3,120 |
| 90 | 12.2.1 | Priprava načrta | 3d | 2015-10-14 | 2015-10-19 | 38 | 0d |  | Tester 3 | 24h | 180 |
| 91 | 12.2.2 | Priprava testnih primerov | 2d | 2015-10-19 | 2015-10-21 | 90 | 0d |  | Tester 4 | 16h | 120 |
| 92 | 12.2.3 | Testiranje | 15d | 2015-10-21 | 2015-11-11 | 91 | 0d |  | Tester 3; Tester 4 | 240h | 1,800 |
| 93 | 12.2.4 | Poročilo | 1d | 2015-11-11 | 2015-11-12 | 92 | 0d |  | Tester 3 | 8h | 60 |
| 94 | 12.2.5 | Priprava dokumentacije | 2d | 2015-11-12 | 2015-11-16 | 93 | 0d |  | Tester 4 | 16h | 120 |
| 95 | 12.2.6 | Ponovna iteracija implementacije | 7d | 2015-11-16 | 2015-11-25 | 94 | 0d |  | Tester 3; Tester 4 | 112h | 840 |
| 96 | 12.3 | **Modifikacija brezpilotna zračna plovila** | 22d | 2015-10-14 | 2015-11-13 |  | 8d |  |  | 296h | 2,368 |
| 97 | 12.3.1 | Priprava načrta | 3d | 2015-10-14 | 2015-10-19 | 38 | 8d | 0d | Tester BZP 1 | 24h | 192 |
| 98 | 12.3.2 | Priprava testnih primerov | 1d | 2015-10-19 | 2015-10-20 | 97 | 8d | 0d | Tester BZP 2 | 8h | 64 |
| 99 | 12.3.3 | Testiranje | 9d | 2015-10-20 | 2015-11-02 | 98 | 8d | 0d | Tester BZP 1; Tester BZP 2 | 144h | 1,152 |
| 100 | 12.3.4 | Poročilo | 1d | 2015-11-02 | 2015-11-03 | 99 | 8d | 0d | Tester BZP 1 | 8h | 64 |
| 101 | 12.3.5 | Priprava dokumentacije | 2d | 2015-11-03 | 2015-11-05 | 100 | 8d | 0d | Tester BZP 2 | 16h | 128 |
| 102 | 12.3.6 | Ponovna iteracija implementacije | 6d | 2015-11-05 | 2015-11-13 | 101 | 8d |  | Tester BZP 1; Tester BZP 2 | 96h | 768 |
| 103 | 12.4 | **Mobilna aplikacija** | 24d | 2015-10-14 | 2015-11-17 |  | 6d |  |  | 312h | 2,340 |
| 104 | 12.4.1 | Priprava načrta | 3d | 2015-10-14 | 2015-10-19 | 38 | 6d | 0d | Tester 5 | 24h | 180 |
| 105 | 12.4.2 | Priprava testnih primerov | 3d | 2015-10-19 | 2015-10-22 | 104 | 6d | 0d | Tester 6 | 24h | 180 |
| 106 | 12.4.3 | Testiranje | 10d | 2015-10-22 | 2015-11-05 | 105 | 6d | 0d | Tester 5; Tester 6 | 160h | 1,200 |
| 107 | 12.4.4 | Poročilo | 1d | 2015-11-05 | 2015-11-06 | 106 | 6d | 0d | Tester 5 | 8h | 60 |
| 108 | 12.4.5 | Priprava dokumentacije | 2d | 2015-11-06 | 2015-11-10 | 107 | 6d | 0d | Tester 6 | 16h | 120 |
| 109 | 12.4.6 | Ponovna iteracija implementacije | 5d | 2015-11-10 | 2015-11-17 | 108 | 6d |  | Tester 5; Tester 6 | 80h | 600 |

| ID | WBS | Task | Duration | Start | Finish | Predecessors | Total slack | Free slack | Resources | Work | Cost |
| --- | --- | --- | --- | --- | --- | --- | --- | --- | --- | --- | --- |
| 110 | 13 | **Priprava navodil za uporabo** | 4d | 2015-11-25 | 2015-12-01 |  | 0d |  |  | 368h | 3,312.8 |
| 111 | 13.1 | Priprava navodil za uporabo spletne aplikacije | 3d | 2015-11-25 | 2015-11-30 | 38, 81 | 1d |  | Vodja delovne skupine - spletna a.; Načrtovalec 2 | 48h | 444 |
| 112 | 13.2 | Priprava navodil za uporabo mobilne aplikacije | 3d | 2015-11-25 | 2015-11-30 | 38, 81 | 1d |  | Vodja delovne skupine - mobilna a.; Načrtovalec 3 | 48h | 444 |
| 113 | 13.3 | Priprava navodil za uporabo brezpilotnih zračnih plovil | 3d | 2015-11-25 | 2015-11-30 | 38, 81 | 1d |  | Načrtovalec 1; Vodja delovne skupine - BZP | 48h | 444 |
| 114 | 13.4 | Priprava navodila za vzdrževaje brezpilotnih zračnih plovil | 4d | 2015-11-25 | 2015-12-01 | 38, 81 | 0d |  | Mehatronik 2; Elektronik 2; Elektronik 1; Mehatronik 1 | 128h | 1,100.8 |
| 115 | 13.5 | Priprava navil za vzdrževanje intelegentnega sistema | 4d | 2015-11-25 | 2015-12-01 | 38, 81 | 0d |  | Načrtovalec sistema; Oblikovalec podatkovne baze; Vodja delovne skupine - intelegentni s. | 96h | 880 |
| 116 | 14 | **Izobraževanje** | 5d | 2015-12-01 | 2015-12-08 |  | 0d |  |  | 104h | 980 |
| 117 | 14.1 | Izboraževanje upravljanje intelegentnega sistema | 5d | 2015-12-01 | 2015-12-08 | 110 | 0d |  | Načrtovalec sistema | 40h | 340 |
| 118 | 14.2 | Izobraževanje uporabe in vzdrževanja brezpilotnih zračnih polovil | 5d | 2015-12-01 | 2015-12-08 | 110 | 0d |  | Vodja delovne skupine - BZP | 40h | 400 |
| 119 | 14.3 | Izobraževanje uporabe mobilne aplikacije | 1d | 2015-12-01 | 2015-12-02 | 110 | 4d |  | Vodja delovne skupine - mobilna a. | 8h | 80 |
| 120 | 14.4 | Izobraževanje uporabe spletne aplikacije | 2d | 2015-12-01 | 2015-12-03 | 110 | 3d |  | Vodja delovne skupine - spletna a. | 16h | 160 |
| 121 | 15 | **Zaključek projekta** | 4d | 2015-12-08 | 2015-12-14 |  | 0d |  |  | 176h | 1,553.6 |
| 122 | 15.1 | **Namestitev pri naročniku** | 4d | 2015-12-08 | 2015-12-14 |  | 0d |  |  | 176h | 1,553.6 |
| 123 | 15.1.1 | Priprava načrta namestitve | 1d | 2015-12-08 | 2015-12-09 | 116 | 0d |  | Načrtovalec sistema; Oblikovalec podatkovne baze; Vodja projekta | 24h | 236 |
| 124 | 15.1.2 | Priprava in namestitev strežniških sistemov | 1d | 2015-12-09 | 2015-12-10 | 123 | 0d |  | Načrtovalec sistema; Oblikovalec podatkovne baze; Vzdrževalec | 24h | 196 |
| 125 | 15.1.3 | Namestitev podatkovne baze | 1d | 2015-12-10 | 2015-12-11 | 124 | 0d |  | Oblikovalec podatkovne baze | 8h | 72 |
| 126 | 15.1.4 | Vnos podatkov v podatkovno bazo | 1d | 2015-12-11 | 2015-12-14 | 125 | 0d |  | Oblikovalec podatkovne baze | 8h | 72 |
| 127 | 15.1.5 | Namestitev intelegentega sistema | 1d | 2015-12-08 | 2015-12-09 | 116 | 1d | 0d | Vodja delovne skupine - intelegentni s. | 8h | 80 |
| 128 | 15.1.6 | Preizkus delovanja intelegentnega sistema | 1d | 2015-12-09 | 2015-12-10 | 127 | 1d | 0d | Tester 5; Tester 6; Vodja delovne skupine - intelegentni s. | 24h | 200 |
| 129 | 15.1.7 | Namestitev mobilne aplikacije | 1d | 2015-12-08 | 2015-12-09 | 116 | 3d |  | Vodja delovne skupine - mobilna a. | 8h | 80 |
| 130 | 15.1.8 | Namestitev spletne aplikacije | 1d | 2015-12-08 | 2015-12-09 | 116 | 3d |  | Vodja delovne skupine - spletna a. | 8h | 80 |
| 131 | 15.1.9 | Preizkus delovanja spletne in mobilne aplikacije | 1d | 2015-12-08 | 2015-12-09 | 116 | 3d |  | Tester 1; Tester 2; Tester 3; Tester 4 | 32h | 240 |
| 132 | 15.1.10 | Namestitev brezpilotnih zračnih plovil | 1d | 2015-12-08 | 2015-12-09 | 116 | 3d |  | Vodja delovne skupine - BZP | 8h | 80 |
| 133 | 15.1.11 | Preizkus delovanja brezpilotnih zračnih plovil | 1d | 2015-12-10 | 2015-12-11 | 128 | 1d |  | Elektronik 1; Mehatronik 1; Vodja delovne skupine - intelegentni s. | 24h | 217.6 |
| 134 | 16 | Pogostitev izvajalcev | 1d | 2015-12-14 | 2015-12-15 | 121 | 0d |  | Zakuska |  | 200 |

Notes:
- 134: Udeleženi vsi sodelujoči na projektu
